# Ragnarok-atualizado

Schedule from MS Project, 2019-08-19 to 2019-11-25, status date 2019-11-26, costs in R$, A marks actual dates.
SESI SENAI SP

## Calendars

- Ragnarok: Mon-Tue 13:00-17:00; Wed off; Thu-Fri 13:00-17:00; Sat-Sun off. Exceptions (off unless hours are given): 2019-11-15 (Proclamação da Replublica).

## Resources

| Resource | Rate |
| --- | --- |
| Desenvolvedor Back-End - Vinicius Morais | 45.96 |
| Desenvolvedor Front-End - Diego | 45.89 |
| Desenvolvedor Front-End - Gabriel | 48.46 |
| Desenvolvedor Front-End - Vinicius Oliveira | 48.46 |
| Desenvolvedor Banco de Dados - Diego | 79.18 |
| Desenvolvedor Banco de Dados - Gabriel | 79.18 |
| Desenvolvedor Banco de Dados - Vinicius Morais | 79.18 |
| Desenvolvedor Banco de Dados - Vinicius Oliveira | 79.18 |
| Visual Studio Code |  |
| Figma |  |
| Desenvolvedor Back-End - Diego | 45.96 |
| React |  |
| Ionic |  |
| Node.js |  |
| Desenvolvedor Front-End - Vinicius Morais | 45.89 |
| Web Designer - Diego | 19.35 |
| Web Designer - Vinicius Oliveira | 19.35 |

## Schedule

| ID | WBS | Task | Duration | Start | Finish | Predecessors | Complete | Remaining | Baseline start | Baseline finish | Baseline duration | Total slack | Constraint | Resources | Work | Actual work | Cost | Baseline cost | Actual cost |
| --- | --- | --- | --- | --- | --- | --- | --- | --- | --- | --- | --- | --- | --- | --- | --- | --- | --- | --- | --- |
| 1 | 1 | **Trabalho de Conclusão de Curso** | 28d | 2019-08-19 13:00 A | 2019-11-25 17:00 |  | 77% | 6.57d | 2019-08-19 13:00 | 2019-11-28 17:00 | 29d | 0d |  |  | 995h | 747h | 36,948.73 | 37,603.47 | 28,110.81 |
| 2 | 1.1 | **Concepção do Projeto** | 3.5d | 2019-08-19 13:00 A | 2019-08-29 17:00 A |  | 100% |  | 2019-08-19 13:00 | 2019-08-29 17:00 | 3.5d |  |  |  | 88h | 88h | 4,842.72 | 4,804.02 | 4,842.72 |
| 3 | 1.1.1 | Levantamento de Requisitos | 4h | 2019-08-19 13:00 A | 2019-08-19 17:00 A |  | 100% |  | 2019-08-19 13:00 | 2019-08-19 17:00 | 4h |  | start no earlier than 2019-08-19 09:00 | Desenvolvedor Banco de Dados - Diego; Desenvolvedor Banco de Dados - Gabriel; Desenvolvedor Banco de Dados - Vinicius Morais; Desenvolvedor Banco de Dados - Vinicius Oliveira | 16h | 16h | 1,266.88 | 1,266.88 | 1,266.88 |
| 4 | 1.1.2 | Entendimento | 2h | 2019-08-20 13:00 A | 2019-08-20 15:00 A | 3 | 100% |  | 2019-08-20 13:00 | 2019-08-20 15:00 | 2h |  | start no earlier than 2019-08-20 09:00 | Desenvolvedor Banco de Dados - Diego; Desenvolvedor Banco de Dados - Gabriel; Desenvolvedor Banco de Dados - Vinicius Morais; Desenvolvedor Banco de Dados - Vinicius Oliveira | 8h | 8h | 633.44 | 633.44 | 633.44 |
| 5 | 1.1.3 | **Banco de Dados** | 1d | 2019-08-20 15:00 A | 2019-08-23 15:00 A |  | 100% |  | 2019-08-20 15:00 | 2019-08-23 15:00 | 1d |  |  |  | 28h | 28h | 2,217.04 | 2,217.04 | 2,217.04 |
| 6 | 1.1.3.1 | Modelo Conceitual | 4h | 2019-08-20 15:00 A | 2019-08-22 15:00 A | 4 | 100% |  | 2019-08-20 15:00 | 2019-08-22 15:00 | 4h |  | start no earlier than 2019-08-20 09:00 | Desenvolvedor Banco de Dados - Diego; Desenvolvedor Banco de Dados - Vinicius Morais; Desenvolvedor Banco de Dados - Vinicius Oliveira | 12h | 12h | 950.16 | 950.16 | 950.16 |
| 7 | 1.1.3.2 | Modelo Lógico | 4h | 2019-08-22 15:00 A | 2019-08-23 15:00 A | 6 | 100% |  | 2019-08-22 15:00 | 2019-08-23 15:00 | 4h |  | start no earlier than 2019-08-22 09:00 | Desenvolvedor Banco de Dados - Diego; Desenvolvedor Banco de Dados - Gabriel; Desenvolvedor Banco de Dados - Vinicius Morais; Desenvolvedor Banco de Dados - Vinicius Oliveira | 16h | 16h | 1,266.88 | 1,266.88 | 1,266.88 |
| 8 | 1.1.4 | **Wireframe** | 1.75d | 2019-08-23 15:00 A | 2019-08-29 17:00 A |  | 100% |  | 2019-08-23 15:00 | 2019-08-29 17:00 | 1.75d |  |  |  | 36h | 36h | 725.36 | 686.66 | 725.36 |
| 9 | 1.1.4.1 | **Front End** | 1.75d | 2019-08-23 15:00 A | 2019-08-29 17:00 A |  | 100% |  | 2019-08-23 15:00 | 2019-08-29 16:00 | 1.62d |  |  |  | 28h | 28h | 541.8 | 503.1 | 541.8 |
| 10 | 1.1.4.1.1 | Cadastro de Contas | 2h | 2019-08-23 15:00 A | 2019-08-23 18:00 A | 7 | 100% |  | 2019-08-23 15:00 | 2019-08-23 18:00 | 2h |  | finish no earlier than 2019-08-23 18:00 | Web Designer - Vinicius Oliveira; Web Designer - Diego; Figma | 4h | 4h | 77.4 | 77.4 | 77.4 |
| 11 | 1.1.4.1.2 | Login | 2h | 2019-08-26 13:00 A | 2019-08-26 15:00 A | 10 | 100% |  | 2019-08-26 13:00 | 2019-08-26 15:00 | 2h |  |  | Web Designer - Vinicius Oliveira; Web Designer - Diego; Figma | 4h | 4h | 77.4 | 77.4 | 77.4 |
| 12 | 1.1.4.1.3 | Cadastro de Produtos | 2h | 2019-08-26 15:00 A | 2019-08-26 17:00 A | 11 | 100% |  | 2019-08-26 15:00 | 2019-08-26 17:00 | 2h |  |  | Web Designer - Vinicius Oliveira; Web Designer - Diego; Figma | 4h | 4h | 77.4 | 77.4 | 77.4 |
| 13 | 1.1.4.1.4 | Feed de Produtos | 2h | 2019-08-27 13:00 A | 2019-08-27 15:00 A | 12 | 100% |  | 2019-08-27 13:00 | 2019-08-27 15:00 | 2h |  |  | Web Designer - Diego; Web Designer - Vinicius Oliveira; Figma | 4h | 4h | 77.4 | 77.4 | 77.4 |
| 14 | 1.1.4.1.5 | Chat | 2h | 2019-08-27 15:00 A | 2019-08-27 17:00 A | 13 | 100% |  | 2019-08-27 15:00 | 2019-08-27 17:00 | 2h |  |  | Web Designer - Vinicius Oliveira; Web Designer - Diego; Figma | 4h | 4h | 77.4 | 77.4 | 77.4 |
| 15 | 1.1.4.1.6 | CMS | 4h | 2019-08-29 13:00 A | 2019-08-29 17:00 A | 14 | 100% |  | 2019-08-29 13:00 | 2019-08-29 16:00 | 3h |  |  | Web Designer - Vinicius Oliveira; Web Designer - Diego; Figma | 8h | 8h | 154.8 | 116.1 | 154.8 |
| 16 | 1.1.4.2 | **Back End** | 0.5d | 2019-08-29 13:00 A | 2019-08-29 17:00 A |  | 100% |  | 2019-08-29 13:00 | 2019-08-29 17:00 | 0.5d |  |  |  | 8h | 8h | 183.56 | 183.56 | 183.56 |
| 17 | 1.1.4.2.1 | Documentação | 4h | 2019-08-29 13:00 A | 2019-08-29 17:00 A | 14 | 100% |  | 2019-08-29 13:00 | 2019-08-29 17:00 | 4h |  |  | Desenvolvedor Front-End - Vinicius Morais; React; Visual Studio Code | 8h | 8h | 183.56 | 183.56 | 183.56 |
| 18 | 1.2 | **Desenvolvimento** | 24.5d | 2019-08-30 13:00 A | 2019-11-25 17:00 |  | 74% | 6.26d | 2019-08-30 13:00 | 2019-11-28 17:00 | 25.5d | 0d |  |  | 907h | 659h | 32,106.01 | 32,799.45 | 23,268.09 |
| 19 | 1.2.1 | **Entrega 1 - Login/Cadastro** | 2.88d | 2019-08-30 13:00 A | 2019-09-09 16:00 A |  | 100% |  | 2019-08-30 13:00 | 2019-09-09 16:00 | 2.88d |  |  |  | 79h | 79h | 2,929.99 | 2,929.99 | 2,929.99 |
| 20 | 1.2.1.1 | **Banco de Dados** | 0.5d | 2019-08-30 13:00 A | 2019-08-30 17:00 A |  | 100% |  | 2019-08-30 13:00 | 2019-08-30 17:00 | 0.5d |  |  |  | 8h | 8h | 633.44 | 633.44 | 633.44 |
| 21 | 1.2.1.1.1 | Modelo físico | 4h | 2019-08-30 13:00 A | 2019-08-30 17:00 A | 17 | 100% |  | 2019-08-30 13:00 | 2019-08-30 17:00 | 4h |  |  | Desenvolvedor Banco de Dados - Vinicius Morais; Desenvolvedor Banco de Dados - Vinicius Oliveira | 8h | 8h | 633.44 | 633.44 | 633.44 |
| 22 | 1.2.1.2 | **Cadastro** | 1.25d | 2019-09-02 13:00 A | 2019-09-05 15:00 A |  | 100% |  | 2019-09-02 13:00 | 2019-09-05 15:00 | 1.25d |  |  |  | 26h | 26h | 653.3 | 653.3 | 653.3 |
| 23 | 1.2.1.2.1 | **Api** | 1d | 2019-09-02 13:00 A | 2019-09-03 17:00 A |  | 100% |  | 2019-09-02 13:00 | 2019-09-03 17:00 | 1d |  |  |  | 16h | 16h | 367.68 | 367.68 | 367.68 |
| 24 | 1.2.1.2.1.1 | Crud de Usuário | 8h | 2019-09-02 13:00 A | 2019-09-03 17:00 A | 21 | 100% |  | 2019-09-02 13:00 | 2019-09-03 17:00 | 8h |  |  | Desenvolvedor Back-End - Vinicius Morais; Visual Studio Code; Node.js | 16h | 16h | 367.68 | 367.68 | 367.68 |

| ID | WBS | Task | Duration | Start | Finish | Predecessors | Complete | Baseline start | Baseline finish | Baseline duration | Resources | Work | Actual work | Cost | Baseline cost | Actual cost |
| --- | --- | --- | --- | --- | --- | --- | --- | --- | --- | --- | --- | --- | --- | --- | --- | --- |
| 25 | 1.2.1.2.2 | **Desenvolvimento da Tela de Cadastro** | 0.25d | 2019-09-05 13:00 A | 2019-09-05 15:00 A |  | 100% | 2019-09-05 13:00 | 2019-09-05 15:00 | 0.25d |  | 10h | 10h | 285.62 | 285.62 | 285.62 |
| 26 | 1.2.1.2.2.1 | Aplicativo Web | 2h | 2019-09-05 13:00 A | 2019-09-05 15:00 A | 24 | 100% | 2019-09-05 13:00 | 2019-09-05 15:00 | 2h | Desenvolvedor Front-End - Diego; Visual Studio Code; React | 4h | 4h | 91.78 | 91.78 | 91.78 |
| 27 | 1.2.1.2.2.2 | Aplicativo Mobile | 2h | 2019-09-05 13:00 A | 2019-09-05 15:00 A | 24 | 100% | 2019-09-05 13:00 | 2019-09-05 15:00 | 2h | Desenvolvedor Front-End - Gabriel; Desenvolvedor Front-End - Vinicius Oliveira; Ionic; Visual Studio Code | 6h | 6h | 193.84 | 193.84 | 193.84 |
| 28 | 1.2.1.3 | **Login** | 1d | 2019-09-05 13:00 A | 2019-09-06 17:00 A |  | 100% | 2019-09-05 13:00 | 2019-09-06 17:00 | 1d |  | 24h | 24h | 663.3 | 663.3 | 663.3 |
| 29 | 1.2.1.3.1 | **Api** | 0.5d | 2019-09-05 13:00 A | 2019-09-05 17:00 A |  | 100% | 2019-09-05 13:00 | 2019-09-05 17:00 | 0.5d |  | 8h | 8h | 183.84 | 183.84 | 183.84 |
| 30 | 1.2.1.3.1.1 | Read Usuario | 2h | 2019-09-05 13:00 A | 2019-09-05 15:00 A | 24 | 100% | 2019-09-05 13:00 | 2019-09-05 15:00 | 2h | Desenvolvedor Back-End - Vinicius Morais; Node.js; Visual Studio Code | 4h | 4h | 91.92 | 91.92 | 91.92 |
| 31 | 1.2.1.3.1.2 | Autenticação de Usuários | 2h | 2019-09-05 15:00 A | 2019-09-05 17:00 A | 30 | 100% | 2019-09-05 15:00 | 2019-09-05 17:00 | 2h | Desenvolvedor Back-End - Vinicius Morais; Node.js; Visual Studio Code | 4h | 4h | 91.92 | 91.92 | 91.92 |
| 32 | 1.2.1.3.2 | **Desenvolvimento da Tela de Login** | 0.5d | 2019-09-06 13:00 A | 2019-09-06 17:00 A |  | 100% | 2019-09-06 13:00 | 2019-09-06 17:00 | 0.5d |  | 16h | 16h | 479.46 | 479.46 | 479.46 |
| 33 | 1.2.1.3.2.1 | Aplicativo Web | 2h | 2019-09-06 13:00 A | 2019-09-06 15:00 A | 31 | 100% | 2019-09-06 13:00 | 2019-09-06 15:00 | 2h | Desenvolvedor Front-End - Diego; Visual Studio Code; React | 4h | 4h | 91.78 | 91.78 | 91.78 |
| 34 | 1.2.1.3.2.2 | Aplicativo Mobile | 4h | 2019-09-06 13:00 A | 2019-09-06 17:00 A | 31 | 100% | 2019-09-06 13:00 | 2019-09-06 17:00 | 4h | Desenvolvedor Front-End - Gabriel; Desenvolvedor Front-End - Vinicius Oliveira; Ionic; Visual Studio Code | 12h | 12h | 387.68 | 387.68 | 387.68 |
| 35 | 1.2.1.4 | **Teste** | 0.88d | 2019-09-06 13:00 A | 2019-09-09 16:00 A |  | 100% | 2019-09-06 13:00 | 2019-09-09 16:00 | 0.88d |  | 21h | 21h | 979.95 | 979.95 | 979.95 |
| 36 | 1.2.1.4.1 | Teste Api | 6h | 2019-09-06 13:00 A | 2019-09-09 15:00 A | 31 | 100% | 2019-09-06 13:00 | 2019-09-09 15:00 | 6h | Desenvolvedor Back-End - Diego; Desenvolvedor Back-End - Vinicius Morais | 12h | 12h | 551.52 | 551.52 | 551.52 |
| 37 | 1.2.1.4.2 | Teste Aplicativo Web | 3h | 2019-09-06 15:00 A | 2019-09-09 14:00 A | 33 | 100% | 2019-09-06 15:00 | 2019-09-09 14:00 | 3h | Desenvolvedor Front-End - Diego | 3h | 3h | 137.67 | 137.67 | 137.67 |
| 38 | 1.2.1.4.3 | Teste Aplicativo Mobile | 3h | 2019-09-09 13:00 A | 2019-09-09 16:00 A | 34 | 100% | 2019-09-09 13:00 | 2019-09-09 16:00 | 3h | Desenvolvedor Front-End - Gabriel; Desenvolvedor Front-End - Vinicius Oliveira | 6h | 6h | 290.76 | 290.76 | 290.76 |
| 39 | 1.2.2 | **Entrega 2 - Cadastro de Produtos/Feed de Produtos** | 10.62d | 2019-09-09 15:00 A | 2019-10-15 16:00 A |  | 100% | 2019-09-09 15:00 | 2019-10-15 16:00 | 10.62d |  | 234h | 234h | 7,729.78 | 7,729.78 | 7,729.78 |
| 40 | 1.2.2.1 | **Banco de Dados** | 0.5d | 2019-09-09 15:00 A | 2019-09-10 15:00 A |  | 100% | 2019-09-09 15:00 | 2019-09-10 15:00 | 0.5d |  | 8h | 8h | 633.44 | 633.44 | 633.44 |
| 41 | 1.2.2.1.1 | Modelo Físico | 4h | 2019-09-09 15:00 A | 2019-09-10 15:00 A | 36 | 100% | 2019-09-09 15:00 | 2019-09-10 15:00 | 4h | Desenvolvedor Banco de Dados - Vinicius Morais; Desenvolvedor Banco de Dados - Vinicius Oliveira | 8h | 8h | 633.44 | 633.44 | 633.44 |
| 42 | 1.2.2.2 | **Cadastro de Produtos** | 3d | 2019-09-10 15:00 A | 2019-09-20 15:00 A |  | 100% | 2019-09-10 15:00 | 2019-09-20 15:00 | 3d |  | 96h | 96h | 2,652.64 | 2,652.64 | 2,652.64 |
| 43 | 1.2.2.2.1 | **Api** | 1d | 2019-09-10 15:00 A | 2019-09-13 15:00 A |  | 100% | 2019-09-10 15:00 | 2019-09-13 15:00 | 1d |  | 16h | 16h | 367.68 | 367.68 | 367.68 |
| 44 | 1.2.2.2.1.1 | Crud de Produtos | 8h | 2019-09-10 15:00 A | 2019-09-13 15:00 A | 41 | 100% | 2019-09-10 15:00 | 2019-09-13 15:00 | 8h | Desenvolvedor Back-End - Vinicius Morais; Visual Studio Code; Node.js | 16h | 16h | 367.68 | 367.68 | 367.68 |
| 45 | 1.2.2.2.2 | **Desenvolvimento da Tela de Cadastro de Produtos** | 2d | 2019-09-13 15:00 A | 2019-09-20 15:00 A |  | 100% | 2019-09-13 15:00 | 2019-09-20 15:00 | 2d |  | 80h | 80h | 2,284.96 | 2,284.96 | 2,284.96 |
| 46 | 1.2.2.2.2.1 | Aplicativo Web | 16h | 2019-09-13 15:00 A | 2019-09-20 15:00 A | 44 | 100% | 2019-09-13 15:00 | 2019-09-20 15:00 | 16h | Desenvolvedor Front-End - Diego; Visual Studio Code; React | 32h | 32h | 734.24 | 734.24 | 734.24 |
| 47 | 1.2.2.2.2.2 | Aplicativo Mobile | 16h | 2019-09-13 15:00 A | 2019-09-20 15:00 A | 44 | 100% | 2019-09-13 15:00 | 2019-09-20 15:00 | 16h | Desenvolvedor Front-End - Gabriel; Desenvolvedor Front-End - Vinicius Oliveira; Ionic; Visual Studio Code | 48h | 48h | 1,550.72 | 1,550.72 | 1,550.72 |
| 48 | 1.2.2.3 | **Feed de Produtos** | 0.75d | 2019-09-20 15:00 A | 2019-09-23 17:00 A |  | 100% | 2019-09-20 15:00 | 2019-09-23 17:00 | 0.75d |  | 30h | 30h | 856.86 | 856.86 | 856.86 |
| 49 | 1.2.2.3.1 | Aplicativo Web | 6h | 2019-09-20 15:00 A | 2019-09-23 17:00 A | 46 | 100% | 2019-09-20 15:00 | 2019-09-23 17:00 | 6h | Desenvolvedor Front-End - Diego; React; Visual Studio Code | 12h | 12h | 275.34 | 275.34 | 275.34 |
| 50 | 1.2.2.3.2 | Aplicativo Mobile | 6h | 2019-09-20 15:00 A | 2019-09-23 17:00 A | 47 | 100% | 2019-09-20 15:00 | 2019-09-23 17:00 | 6h | Desenvolvedor Front-End - Gabriel; Desenvolvedor Front-End - Vinicius Oliveira; Ionic; Visual Studio Code | 18h | 18h | 581.52 | 581.52 | 581.52 |

| ID | WBS | Task | Duration | Start | Finish | Predecessors | Complete | Baseline start | Baseline finish | Baseline duration | Resources | Work | Actual work | Cost | Baseline cost | Actual cost |
| --- | --- | --- | --- | --- | --- | --- | --- | --- | --- | --- | --- | --- | --- | --- | --- | --- |
| 51 | 1.2.2.4 | **Edição de Produtos** | 3d | 2019-09-23 17:00 A | 2019-10-03 17:00 A |  | 100% | 2019-09-23 17:00 | 2019-10-03 17:00 | 3d |  | 72h | 72h | 2,284.96 | 2,284.96 | 2,284.96 |
| 52 | 1.2.2.4.1 | **Desenvolvimento da Tela de Edição de Produtos** | 3d | 2019-09-23 17:00 A | 2019-10-03 17:00 A |  | 100% | 2019-09-23 17:00 | 2019-10-03 17:00 | 3d |  | 72h | 72h | 2,284.96 | 2,284.96 | 2,284.96 |
| 53 | 1.2.2.4.1.1 | Aplicativo Web | 16h | 2019-09-23 17:00 A | 2019-09-30 17:00 A | 49 | 100% | 2019-09-23 17:00 | 2019-09-30 17:00 | 16h | Desenvolvedor Back-End - Vinicius Morais; Desenvolvedor Front-End - Diego; React; Visual Studio Code | 24h | 24h | 734.24 | 734.24 | 734.24 |
| 54 | 1.2.2.4.1.2 | Aplicativo Mobile | 16h | 2019-09-24 13:00 A | 2019-10-03 17:00 A | 50 | 100% | 2019-09-24 13:00 | 2019-10-03 17:00 | 16h | Desenvolvedor Front-End - Gabriel; Desenvolvedor Front-End - Vinicius Oliveira; Ionic; Visual Studio Code | 48h | 48h | 1,550.72 | 1,550.72 | 1,550.72 |
| 55 | 1.2.2.5 | **Testes** | 9.12d | 2019-09-13 15:00 A | 2019-10-15 16:00 A |  | 100% | 2019-09-13 15:00 | 2019-10-15 16:00 | 9.12d |  | 28h | 28h | 1,301.88 | 1,301.88 | 1,301.88 |
| 56 | 1.2.2.5.1 | Teste Api | 8h | 2019-09-13 15:00 A | 2019-09-17 15:00 A | 44 | 100% | 2019-09-13 15:00 | 2019-09-17 15:00 | 8h | Desenvolvedor Back-End - Vinicius Morais; Desenvolvedor Back-End - Diego | 16h | 16h | 735.36 | 735.36 | 735.36 |
| 57 | 1.2.2.5.2 | Teste Aplicativo Web | 3h | 2019-10-11 15:00 A | 2019-10-15 16:00 A | 53 | 100% | 2019-10-11 15:00 | 2019-10-15 16:00 | 3h | Desenvolvedor Back-End - Diego; Desenvolvedor Back-End - Vinicius Morais | 6h | 6h | 275.76 | 275.76 | 275.76 |
| 58 | 1.2.2.5.3 | Teste Aplicativo Mobile | 3h | 2019-10-04 13:00 A | 2019-10-15 14:00 A | 54 | 100% | 2019-10-04 13:00 | 2019-10-15 14:00 | 3h | Desenvolvedor Front-End - Gabriel; Desenvolvedor Front-End - Vinicius Oliveira | 6h | 6h | 290.76 | 290.76 | 290.76 |
| 59 | 1.2.3 | **Entrega 3 - Chat/Notificação** | 8d | 2019-09-17 15:00 A | 2019-10-15 15:00 A |  | 100% | 2019-09-17 15:00 | 2019-10-15 15:00 | 8d |  | 266h | 266h | 9,505.28 | 9,505.28 | 9,505.28 |
| 60 | 1.2.3.1 | **Banco de Dados** | 1d | 2019-09-17 15:00 A | 2019-09-20 15:00 A |  | 100% | 2019-09-17 15:00 | 2019-09-20 15:00 | 1d |  | 16h | 16h | 1,266.88 | 1,266.88 | 1,266.88 |
| 61 | 1.2.3.1.1 | Modelo Físico | 8h | 2019-09-17 15:00 A | 2019-09-20 15:00 A | 56 | 100% | 2019-09-17 15:00 | 2019-09-20 15:00 | 8h | Desenvolvedor Banco de Dados - Vinicius Morais; Desenvolvedor Banco de Dados - Vinicius Oliveira | 16h | 16h | 1,266.88 | 1,266.88 | 1,266.88 |
| 62 | 1.2.3.2 | **Chat** | 2d | 2019-09-20 15:00 A | 2019-09-27 15:00 A |  | 100% | 2019-09-20 15:00 | 2019-09-27 15:00 | 2d |  | 72h | 72h | 2,246.08 | 2,246.08 | 2,246.08 |
| 63 | 1.2.3.2.1 | **Api** | 1d | 2019-09-20 15:00 A | 2019-09-24 15:00 A |  | 100% | 2019-09-20 15:00 | 2019-09-24 15:00 | 1d |  | 24h | 24h | 735.36 | 735.36 | 735.36 |
| 64 | 1.2.3.2.1.1 | Desenvolvimento da funcionalidade do Chat | 8h | 2019-09-20 15:00 A | 2019-09-24 15:00 A | 61 | 100% | 2019-09-20 15:00 | 2019-09-24 15:00 | 8h | Desenvolvedor Back-End - Diego; Desenvolvedor Back-End - Vinicius Morais; Node.js; Visual Studio Code | 24h | 24h | 735.36 | 735.36 | 735.36 |
| 65 | 1.2.3.2.2 | **Desenvolvimento da tela e logica do Chat** | 1d | 2019-09-24 15:00 A | 2019-09-27 15:00 A |  | 100% | 2019-09-24 15:00 | 2019-09-27 15:00 | 1d |  | 48h | 48h | 1,510.72 | 1,510.72 | 1,510.72 |
| 66 | 1.2.3.2.2.1 | Aplicativo Web | 8h | 2019-09-24 15:00 A | 2019-09-27 15:00 A | 64 | 100% | 2019-09-24 15:00 | 2019-09-27 15:00 | 8h | Desenvolvedor Back-End - Diego; Desenvolvedor Back-End - Vinicius Morais; React; Visual Studio Code | 24h | 24h | 735.36 | 735.36 | 735.36 |
| 67 | 1.2.3.2.2.2 | Aplicativo Mobile | 8h | 2019-09-24 15:00 A | 2019-09-27 15:00 A | 64 | 100% | 2019-09-24 15:00 | 2019-09-27 15:00 | 8h | Desenvolvedor Front-End - Gabriel; Desenvolvedor Front-End - Vinicius Oliveira; Ionic; Visual Studio Code | 24h | 24h | 775.36 | 775.36 | 775.36 |
| 68 | 1.2.3.3 | **Desenvolvimento Online/Offline** | 4d | 2019-09-27 15:00 A | 2019-10-11 15:00 A |  | 100% | 2019-09-27 15:00 | 2019-10-11 15:00 | 4d |  | 144h | 144h | 4,492.16 | 4,492.16 | 4,492.16 |
| 69 | 1.2.3.3.1 | Api | 16h | 2019-09-27 15:00 A | 2019-10-04 15:00 A | 67 | 100% | 2019-09-27 15:00 | 2019-10-04 15:00 | 16h | Desenvolvedor Back-End - Diego; Desenvolvedor Back-End - Vinicius Morais; Node.js; Visual Studio Code | 48h | 48h | 1,470.72 | 1,470.72 | 1,470.72 |
| 70 | 1.2.3.3.2 | Aplicativo Web | 16h | 2019-10-04 15:00 A | 2019-10-11 15:00 A | 69 | 100% | 2019-10-04 15:00 | 2019-10-11 15:00 | 16h | Desenvolvedor Back-End - Diego; Desenvolvedor Back-End - Vinicius Morais; React; Visual Studio Code | 48h | 48h | 1,470.72 | 1,470.72 | 1,470.72 |
| 71 | 1.2.3.3.3 | Aplicativo Mobile | 16h | 2019-10-04 15:00 A | 2019-10-11 15:00 A | 69 | 100% | 2019-10-04 15:00 | 2019-10-11 15:00 | 16h | Desenvolvedor Front-End - Gabriel; Desenvolvedor Front-End - Vinicius Oliveira; Ionic; Visual Studio Code | 48h | 48h | 1,550.72 | 1,550.72 | 1,550.72 |
| 72 | 1.2.3.4 | **Notificação** | 0.25d | 2019-10-11 15:00 A | 2019-10-11 17:00 A |  | 100% | 2019-10-11 15:00 | 2019-10-11 17:00 | 0.25d |  | 6h | 6h | 193.84 | 193.84 | 193.84 |
| 73 | 1.2.3.4.1 | Aplicativo Mobile | 2h | 2019-10-11 15:00 A | 2019-10-11 17:00 A | 71 | 100% | 2019-10-11 15:00 | 2019-10-11 17:00 | 2h | Desenvolvedor Front-End - Gabriel; Desenvolvedor Front-End - Vinicius Oliveira; Ionic; Visual Studio Code | 6h | 6h | 193.84 | 193.84 | 193.84 |
| 74 | 1.2.3.5 | **Testes** | 1d | 2019-10-11 15:00 A | 2019-10-15 15:00 A |  | 100% | 2019-10-11 15:00 | 2019-10-15 15:00 | 1d |  | 28h | 28h | 1,306.32 | 1,306.32 | 1,306.32 |
| 75 | 1.2.3.5.1 | Teste Api | 6h | 2019-10-14 13:00 A | 2019-10-15 15:00 A | 69 | 100% | 2019-10-14 13:00 | 2019-10-15 15:00 | 6h | Desenvolvedor Back-End - Diego; Desenvolvedor Back-End - Vinicius Morais | 12h | 12h | 551.52 | 551.52 | 551.52 |
| 76 | 1.2.3.5.2 | Teste Aplicativo Web | 4h | 2019-10-11 15:00 A | 2019-10-14 15:00 A | 70 | 100% | 2019-10-11 15:00 | 2019-10-14 15:00 | 4h | Desenvolvedor Front-End - Vinicius Morais; Desenvolvedor Front-End - Diego | 8h | 8h | 367.12 | 367.12 | 367.12 |
| 77 | 1.2.3.5.3 | Teste Aplicativo Mobile | 4h | 2019-10-14 13:00 A | 2019-10-14 17:00 A | 73 | 100% | 2019-10-14 13:00 | 2019-10-14 17:00 | 4h | Desenvolvedor Front-End - Gabriel; Desenvolvedor Front-End - Vinicius Oliveira | 8h | 8h | 387.68 | 387.68 | 387.68 |

| ID | WBS | Task | Duration | Start | Finish | Predecessors | Complete | Baseline start | Baseline finish | Baseline duration | Total slack | Free slack | Resources | Work | Actual work | Cost | Baseline cost | Actual cost |
| --- | --- | --- | --- | --- | --- | --- | --- | --- | --- | --- | --- | --- | --- | --- | --- | --- | --- | --- |
| 78 | 1.2.4 | **Entrega 4 - CMS** | 4d | 2019-10-15 13:00 A | 2019-10-28 17:00 A |  | 100% | 2019-10-15 13:00 | 2019-10-24 17:00 | 3d |  |  |  | 80h | 80h | 3,103.04 | 2,285.76 | 3,103.04 |
| 79 | 1.2.4.1 | **Banco de Dados** | 1d | 2019-10-15 13:00 A | 2019-10-17 17:00 A |  | 100% | 2019-10-15 13:00 | 2019-10-15 17:00 | 0.5d |  |  |  | 16h | 16h | 1,266.88 | 633.44 | 1,266.88 |
| 80 | 1.2.4.1.1 | Modelo Físico | 8h | 2019-10-15 13:00 A | 2019-10-17 17:00 A | 77 | 100% | 2019-10-15 13:00 | 2019-10-15 17:00 | 4h |  |  | Desenvolvedor Banco de Dados - Vinicius Morais; Desenvolvedor Banco de Dados - Vinicius Oliveira | 16h | 16h | 1,266.88 | 633.44 | 1,266.88 |
| 81 | 1.2.4.2 | **API** | 1d | 2019-10-18 13:00 A | 2019-10-21 17:00 A |  | 100% | 2019-10-17 13:00 | 2019-10-17 17:00 | 0.5d |  |  |  | 16h | 16h | 367.68 | 183.84 | 367.68 |
| 82 | 1.2.4.2.1 | Crud do CMS | 8h | 2019-10-18 13:00 A | 2019-10-21 17:00 A | 80 | 100% | 2019-10-17 13:00 | 2019-10-17 17:00 | 4h |  |  | Desenvolvedor Back-End - Vinicius Morais; Node.js; Visual Studio Code | 16h | 16h | 367.68 | 183.84 | 367.68 |
| 83 | 1.2.4.3 | **Web** | 2d | 2019-10-22 13:00 A | 2019-10-28 17:00 A |  | 100% | 2019-10-18 13:00 | 2019-10-24 17:00 | 2d |  |  |  | 48h | 48h | 1,468.48 | 1,468.48 | 1,468.48 |
| 84 | 1.2.4.3.1 | Desenvolvimento da Tela | 8h | 2019-10-22 13:00 A | 2019-10-24 17:00 A | 82 | 100% | 2019-10-18 13:00 | 2019-10-21 17:00 | 8h |  |  | Desenvolvedor Front-End - Diego; Desenvolvedor Front-End - Vinicius Morais; React; Visual Studio Code | 24h | 24h | 734.24 | 734.24 | 734.24 |
| 85 | 1.2.4.3.2 | Desenvolvimento da Lógica | 8h | 2019-10-25 13:00 A | 2019-10-28 17:00 A | 84 | 100% | 2019-10-22 13:00 | 2019-10-24 17:00 | 8h |  |  | Desenvolvedor Front-End - Diego; Desenvolvedor Front-End - Vinicius Morais; React; Visual Studio Code | 24h | 24h | 734.24 | 734.24 | 734.24 |
| 86 | 1.2.5 | **Entrega 5 - Anuncios pagos** | 3.5d | 2019-10-29 13:00 | 2019-11-08 17:00 |  |  | 2019-10-25 13:00 | 2019-11-05 17:00 | 3.5d | 0d |  |  | 152h |  | 5,858.72 | 5,858.72 |  |
| 87 | 1.2.5.1 | **Banco de Dados** | 0.5d | 2019-10-29 13:00 | 2019-10-29 17:00 |  |  | 2019-10-25 13:00 | 2019-10-25 17:00 | 0.5d | 0d |  |  | 8h |  | 633.44 | 633.44 |  |
| 88 | 1.2.5.1.1 | Modelo Físico | 0.5d | 2019-10-29 13:00 | 2019-10-29 17:00 | 85 |  | 2019-10-25 13:00 | 2019-10-25 17:00 | 0.5d | 0d |  | Desenvolvedor Banco de Dados - Vinicius Morais; Desenvolvedor Banco de Dados - Vinicius Oliveira | 8h |  | 633.44 | 633.44 |  |
| 89 | 1.2.5.2 | **API** | 1d | 2019-10-31 13:00 | 2019-11-01 17:00 |  |  | 2019-10-28 13:00 | 2019-10-29 17:00 | 1d | 0d |  |  | 24h |  | 735.36 | 735.36 |  |
| 90 | 1.2.5.2.1 | Crud de Anuncios | 8h | 2019-10-31 13:00 | 2019-11-01 17:00 | 88 |  | 2019-10-28 13:00 | 2019-10-29 17:00 | 8h | 0d |  | Desenvolvedor Back-End - Diego; Desenvolvedor Back-End - Vinicius Morais; Node.js; Visual Studio Code | 24h |  | 735.36 | 735.36 |  |
| 91 | 1.2.5.3 | **Desenvolvimento dos Anuncios(Mobile)** | 1.5d | 2019-11-04 13:00 | 2019-11-07 17:00 |  |  | 2019-10-31 13:00 | 2019-11-04 17:00 | 1.5d | 0d |  |  | 36h |  | 1,163.04 | 1,163.04 |  |
| 92 | 1.2.5.3.1 | Desenvolvimento da Tela | 4h | 2019-11-04 13:00 | 2019-11-04 17:00 | 90 |  | 2019-10-31 13:00 | 2019-10-31 17:00 | 4h | 0d |  | Desenvolvedor Front-End - Gabriel; Desenvolvedor Front-End - Vinicius Oliveira; Visual Studio Code; Ionic | 12h |  | 387.68 | 387.68 |  |
| 93 | 1.2.5.3.2 | Desenvolvimento da Lógica | 8h | 2019-11-05 13:00 | 2019-11-07 17:00 | 92 |  | 2019-11-01 13:00 | 2019-11-04 17:00 | 8h | 0d |  | Desenvolvedor Front-End - Gabriel; Desenvolvedor Front-End - Vinicius Oliveira; Visual Studio Code; Ionic | 24h |  | 775.36 | 775.36 |  |
| 94 | 1.2.5.4 | **Desenvolvimento dos Anuncios(Web)** | 1.5d | 2019-11-04 13:00 | 2019-11-07 17:00 |  |  | 2019-10-31 13:00 | 2019-11-04 17:00 | 1.5d | 4d |  |  | 36h |  | 1,101.36 | 1,101.36 |  |
| 95 | 1.2.5.4.1 | Desenvolvimento da Tela | 4h | 2019-11-04 13:00 | 2019-11-04 17:00 | 90 |  | 2019-10-31 13:00 | 2019-10-31 17:00 | 4h | 4d | 0d | Desenvolvedor Front-End - Diego; Visual Studio Code; Desenvolvedor Front-End - Vinicius Morais; React | 12h |  | 367.12 | 367.12 |  |
| 96 | 1.2.5.4.2 | Desenvolvimento da Lógica | 8h | 2019-11-05 13:00 | 2019-11-07 17:00 | 95 |  | 2019-11-01 13:00 | 2019-11-04 17:00 | 8h | 4d | 0d | Desenvolvedor Front-End - Diego; React; Visual Studio Code; Desenvolvedor Front-End - Vinicius Morais | 24h |  | 734.24 | 734.24 |  |
| 97 | 1.2.5.5 | **Testes** | 2d | 2019-11-04 13:00 | 2019-11-08 17:00 |  |  | 2019-10-31 13:00 | 2019-11-05 17:00 | 2d | 1.5d |  |  | 48h |  | 2,225.52 | 2,225.52 |  |
| 98 | 1.2.5.5.1 | Teste Api | 16h | 2019-11-04 13:00 | 2019-11-08 17:00 | 90 |  | 2019-10-31 13:00 | 2019-11-05 17:00 | 16h | 4d |  | Desenvolvedor Back-End - Diego; Desenvolvedor Back-End - Vinicius Morais | 32h |  | 1,470.72 | 1,470.72 |  |
| 99 | 1.2.5.5.2 | Teste Aplicativo Web | 0.5d | 2019-11-08 13:00 | 2019-11-08 17:00 | 96 |  | 2019-11-05 13:00 | 2019-11-05 17:00 | 0.5d | 4d |  | Desenvolvedor Front-End - Diego; Desenvolvedor Front-End - Vinicius Morais | 8h |  | 367.12 | 367.12 |  |
| 100 | 1.2.5.5.3 | Teste Aplicativo Mobile | 0.5d | 2019-11-08 13:00 | 2019-11-08 17:00 | 93 |  | 2019-11-05 13:00 | 2019-11-05 17:00 | 0.5d | 0d |  | Desenvolvedor Front-End - Gabriel; Desenvolvedor Front-End - Vinicius Oliveira | 8h |  | 387.68 | 387.68 |  |
| 101 | 1.2.6 | **Entrega 6 - Finaliazação do Mobile e Web** | 4d | 2019-11-11 13:00 | 2019-11-25 17:00 |  |  | 2019-11-07 13:00 | 2019-11-28 17:00 | 6d | 0d |  |  | 96h |  | 2,979.2 | 4,489.92 |  |
| 102 | 1.2.6.1 | Finalização (Back-End) | 8h | 2019-11-11 13:00 | 2019-11-12 17:00 | 100 |  | 2019-11-07 13:00 | 2019-11-12 17:00 | 16h | 0d |  | Desenvolvedor Back-End - Diego; Desenvolvedor Back-End - Vinicius Morais; Node.js; Visual Studio Code | 24h |  | 735.36 | 1,470.72 |  |
| 103 | 1.2.6.2 | Finalização (Mobile) | 8h | 2019-11-14 13:00 | 2019-11-18 17:00 | 102 |  | 2019-11-14 13:00 | 2019-11-21 17:00 | 16h | 0d |  | Desenvolvedor Front-End - Gabriel; Desenvolvedor Front-End - Vinicius Oliveira; Ionic; Visual Studio Code | 24h |  | 775.36 | 1,550.72 |  |
| 104 | 1.2.6.3 | Finalização (Web) | 16h | 2019-11-19 13:00 | 2019-11-25 17:00 | 103 |  | 2019-11-22 13:00 | 2019-11-28 17:00 | 16h | 0d |  | Desenvolvedor Front-End - Diego; Desenvolvedor Front-End - Vinicius Morais; React; Visual Studio Code | 48h |  | 1,468.48 | 1,468.48 |  |
